# RH V2 WF CAMPAÑAS 2

Schedule from MS Project, 2018-07-09 to 2018-10-24.
PPG

## Calendars

- Estándar: Mon-Fri 09:00-13:00, 15:00-19:00; Sat-Sun off.

## Resources

| Resource |
| --- |
| Administrador de campaña |
| Administrador de inventario |
| Administrador de inventarios |
| Administrador de Precios ATC |
| Administrador Maestros de Tienda y Clientes |
| Amplificador |
| Aprobador de Arte Rector |
| Aprobador de artes POP |
| Aprobador de Campaña |
| Aprobador de circular |
| Aprobador de Legales |
| Aprobador Retail Mkt |
| Comprador |
| Creador de Medios Digitales |
| Distribuidor de POP |
| Facturador de Kit POP |
| Generador de analisis de rentabilidad |
| Generador de circular |
| Generador de estimación de escenarios |
| Generador de SKU |
| Líder de campaña |
| Parametrizador en Gran Red |
| Parametrizador Oracle |

## Schedule

| ID | WBS | Task | Type | Duration | Start | Finish | Predecessors | Total slack | Resources | Work |
| --- | --- | --- | --- | --- | --- | --- | --- | --- | --- | --- |
| 1 | 1 | **Campañas** |  | 78d | 2018-07-09 | 2018-10-24 |  | 0d |  | 3032h |
| 2 | 1.1 | **Planeación de Campaña** |  | 35d | 2018-07-09 | 2018-08-24 |  | 0d |  | 296h |
| 3 | 1.1.1 | Cargar cronograma de actividades en sistema | manual | 2d | 2018-07-09 | 2018-07-10 |  |  | Administrador de campaña; Líder de campaña | 32h |
| 4 | 1.1.2 | Cargar archivos de Productos, clientes y tiendas a participar | manual | 5d | 2018-07-11 | 2018-07-17 | 3 |  | Líder de campaña | 40h |
| 5 | 1.1.3 | Generar y cargar escenarios de estimación | manual | 10d | 2018-07-18 | 2018-07-31 | 4 |  | Generador de estimación de escenarios | 80h |
| 6 | 1.1.4 | Aprobar escenario de estimación | manual | 3d | 2018-08-01 | 2018-08-03 | 5 |  | Líder de campaña | 24h |
| 7 | 1.1.5 | Generar analisis de rentabilidad | manual | 10d | 2018-08-06 | 2018-08-17 | 6 |  | Generador de analisis de rentabilidad | 80h |
| 8 | 1.1.6 | Autorizar analisis de rentabilidad | manual | 5d | 2018-08-20 | 2018-08-24 | 7 |  | Aprobador de Campaña | 40h |
| 9 | 1.2 | **Configuración de Sistemas y Colaboración con Logística** |  | 20d | 2018-08-27 | 2018-09-21 |  | 0d |  | 400h |
| 10 | 1.2.1 | Preparar inventario de producto para campaña | manual | 20d | 2018-08-27 | 2018-09-21 | 8 |  | Administrador de inventario | 160h |
| 11 | 1.2.2 | Generar parametrización en oracle | manual | 10d | 2018-08-27 | 2018-09-07 | 8 |  | Parametrizador Oracle | 80h |
| 12 | 1.2.3 | Generar parametrización en Gran Red | manual | 20d | 2018-08-27 | 2018-09-21 | 8 |  | Parametrizador en Gran Red | 160h |
| 13 | 1.3 | **Desarrollo de artes** |  | 46d | 2018-07-11 | 2018-09-12 |  | 0d |  | 456h |
| 14 | 1.3.1 | Desarrollar Brief creativo | manual | 3d | 2018-07-11 | 2018-07-13 | 3 |  | Líder de campaña | 24h |
| 15 | 1.3.2 | Elaborar propuesta de arte rector | manual | 25d | 2018-07-16 | 2018-08-17 | 14 |  | Líder de campaña | 200h |
| 16 | 1.3.3 | Aprobación de arte rector | manual | 5d | 2018-08-20 | 2018-08-24 | 15 |  | Aprobador de Arte Rector | 40h |
| 17 | 1.3.4 | Generar propuesta de material POP | manual | 2d | 2018-07-11 | 2018-07-12 | 3 |  | Líder de campaña | 16h |
| 18 | 1.3.5 | Aprobar material POP | manual | 3d | 2018-07-13 | 2018-07-17 | 17 |  | Aprobador Retail Mkt | 24h |
| 19 | 1.3.6 | Generar legales de campaña | manual | 2d | 2018-08-27 | 2018-08-28 | 8 |  | Líder de campaña | 16h |
| 20 | 1.3.7 | Autorizar legales de campaña | manual | 2d | 2018-08-29 | 2018-08-30 | 19 |  | Aprobador de Legales | 16h |
| 21 | 1.3.8 | Definir kit de POP de acuerdo a mecánica y productos a comunicar | manual | 2d | 2018-07-18 | 2018-07-19 | 18 |  | Líder de campaña | 16h |
| 22 | 1.3.9 | Desarrollar adaptaciones de artes de POP de acuerdo a mecánica | manual | 8d | 2018-08-27 | 2018-09-05 | 16, 20FF, 21 |  | Líder de campaña | 64h |
| 23 | 1.3.10 | Autorizar artes de POP | manual | 3d | 2018-09-06 | 2018-09-10 | 22FF+3d |  | Aprobador de artes POP | 24h |
| 24 | 1.3.11 | Enviar artes de POP autorizados en alta y PDF | manual | 2d | 2018-09-11 | 2018-09-12 | 23 |  | Líder de campaña | 16h |

| ID | WBS | Task | Type | Duration | Start | Finish | Predecessors | Total slack | Resources | Work |
| --- | --- | --- | --- | --- | --- | --- | --- | --- | --- | --- |
| 25 | 1.4 | **Exhibición de tienda** |  | 4d | 2018-09-13 | 2018-09-18 |  | 0d |  | 32h |
| 26 | 1.4.1 | Generar guía de colocación y merchandising | manual | 3d | 2018-09-13 | 2018-09-17 | 24 |  | Aprobador Retail Mkt | 24h |
| 27 | 1.4.2 | Aprobación de Guía de Colocación | manual | 1d | 2018-09-18 | 2018-09-18 | 26 |  | Líder de campaña | 8h |
| 28 | 1.5 | **Administración de POP** |  | 69d | 2018-07-20 | 2018-10-24 |  | 0d |  | 912h |
| 29 | 1.5.1 | Solicitud de códigos de POP y kits | manual | 2d | 2018-07-20 | 2018-07-23 | 21 |  | Líder de campaña; Administrador de campaña | 32h |
| 30 | 1.5.2 | Entrega de códigos de material POP | manual | 3d | 2018-07-24 | 2018-07-26 | 29 |  | Generador de SKU | 24h |
| 31 | 1.5.3 | Solicitar cantidad de kit por mecanica y alcance territorial o cliente | manual | 2d | 2018-07-20 | 2018-07-23 | 21 |  | Administrador de campaña; Líder de campaña | 32h |
| 32 | 1.5.4 | Enviar tabla con cantidades de kit para generar SI | manual | 4d | 2018-07-24 | 2018-07-27 | 31 |  | Administrador Maestros de Tienda y Clientes | 32h |
| 33 | 1.5.5 | Gestionar SI aprobada | manual | 5d | 2018-07-30 | 2018-08-03 | 30, 32 |  | Administrador de campaña; Líder de campaña | 80h |
| 34 | 1.5.6 | Liberar Orden de compra | manual | 10d | 2018-08-06 | 2018-08-17 | 33 |  | Comprador | 80h |
| 35 | 1.5.7 | Firmar prueba de color | manual | 5d | 2018-09-07 | 2018-09-13 | 24FF+1d, 34 |  | Líder de campaña | 40h |
| 36 | 1.5.8 | Monitorear Producción y maquila de POP | manual | 20d | 2018-09-14 | 2018-10-11 | 35 |  | Administrador de campaña; Líder de campaña | 320h |
| 37 | 1.5.9 | Solicitar alta de precios de POP | manual | 2d | 2018-08-20 | 2018-08-21 | 34 |  | Administrador de campaña; Líder de campaña | 32h |
| 38 | 1.5.10 | Dar de alta precios de POP | manual | 2d | 2018-08-22 | 2018-08-23 | 37 |  | Administrador de Precios ATC | 16h |
| 39 | 1.5.11 | Confirmar tabla de traspasos | manual | 5d | 2018-09-14 | 2018-09-20 | 35 |  | Administrador Maestros de Tienda y Clientes | 40h |
| 40 | 1.5.12 | Generar traspasos | manual | 6d | 2018-09-24 | 2018-10-01 | 35FS+6d, 39 |  | Administrador de inventario | 48h |
| 41 | 1.5.13 | Enviar archivos para facturación a ejecutivos de ATC | manual | 2d | 2018-09-24 | 2018-09-25 | 35FS+6d, 39 |  | Administrador Maestros de Tienda y Clientes | 16h |
| 42 | 1.5.14 | Facturar a concesionario | manual | 5d | 2018-10-04 | 2018-10-10 | 48, 41 |  | Facturador de Kit POP | 40h |
| 43 | 1.5.15 | Entrega de POP a concesionario | manual | 10d | 2018-10-11 | 2018-10-24 | 42 |  | Distribuidor de POP | 80h |
| 44 | 1.6 | **Comunicación Cliente** |  | 20d | 2018-09-06 | 2018-10-03 |  | 0d |  | 128h |
| 45 | 1.6.1 | Generar solicitud de circular | manual | 5d | 2018-09-06 | 2018-09-12 | 22, 38 |  | Líder de campaña | 40h |
| 46 | 1.6.2 | Generar propuesta de circular | manual | 5d | 2018-09-19 | 2018-09-25 | 27, 45 |  | Generador de circular | 40h |
| 47 | 1.6.3 | Autorizar circular | manual | 5d | 2018-09-26 | 2018-10-02 | 46 |  | Aprobador de circular | 40h |
| 48 | 1.6.4 | Publicación de circular | manual | 1d | 2018-10-03 | 2018-10-03 | 47 |  | Generador de circular | 8h |

| ID | WBS | Task | Type | Duration | Start | Finish | Predecessors | Total slack | Resources | Work |
| --- | --- | --- | --- | --- | --- | --- | --- | --- | --- | --- |
| 49 | 1.7 | **Roll Out Capacitación** |  | 15d | 2018-09-19 | 2018-10-09 |  | 0d |  | 160h |
| 50 | 1.7.1 | Entregar presentación para promoplanner | manual | 5d | 2018-09-19 | 2018-09-25 | 8, 24, 27 |  | Administrador de campaña; Líder de campaña | 80h |
| 51 | 1.7.2 | Generar promoplanner animado y Publicar en Publicomex | manual | 10d | 2018-09-26 | 2018-10-09 | 50 |  | Administrador de campaña | 80h |
| 52 | 1.7.3 | Generar roll out interno | milestone, manual | 0d | 2018-09-26 | 2018-09-26 | 50 |  | Líder de campaña |  |
| 53 | 1.8 | **Comunicación Consumidor** |  | 65d | 2018-07-16 | 2018-10-12 |  | 0d |  | 400h |
| 54 | 1.8.1 | Generar Propuesta de Pauta Medios de Comunicación | manual | 5d | 2018-07-16 | 2018-07-20 | 3, 14 |  | Amplificador | 40h |
| 55 | 1.8.2 | Aprobar Pauta Medios de Comunicación | manual | 5d | 2018-07-18 | 2018-07-24 | 54 |  | Líder de campaña | 40h |
| 56 | 1.8.3 | Gestionar el proceso de Compras para materiales de Amplificación | manual | 15d | 2018-08-27 | 2018-09-14 | 8, 55 |  | Amplificador | 120h |
| 57 | 1.8.4 | Producir materiales de amplificación | manual | 15d | 2018-09-13 | 2018-10-03 | 24, 55 |  | Amplificador | 120h |
| 58 | 1.8.5 | Publicar en Publicomex artes de campaña y medios | manual | 5d | 2018-10-08 | 2018-10-12 | 24, 57 |  | Administrador de campaña; Líder de campaña | 80h |
| 59 | 1.9 | **Medios Digitales** |  | 64d | 2018-07-16 | 2018-10-11 |  | 0d |  | 248h |
| 60 | 1.9.1 | Generar propuesta de medios Digital | manual | 5d | 2018-07-16 | 2018-07-20 | 3, 14 |  | Creador de Medios Digitales | 40h |
| 61 | 1.9.2 | Aprobar propuesta de medios Digitales | manual | 5d | 2018-07-18 | 2018-07-24 | 60 |  | Líder de campaña | 40h |
| 62 | 1.9.3 | Generar Materiales digitales | manual | 15d | 2018-09-13 | 2018-10-03 | 24, 61, 54 |  | Creador de Medios Digitales | 120h |
| 63 | 1.9.4 | Aprobar materiales digitales | manual | 5d | 2018-10-04 | 2018-10-10 | 62 |  | Creador de Medios Digitales | 40h |
| 64 | 1.9.5 | Implementar Campaña Digital | manual | 1d | 2018-10-11 | 2018-10-11 | 63 |  | Creador de Medios Digitales | 8h |
